# lib_zdtm_sync - Detailed Plan

How a schedule from Planner changed from version to version. A marks actual dates.

## Version 1 (saved 2007-02-15)

Note of the change: * Created the docs sub-directory

| ID | WBS | Task | Duration | Start | Finish | Predecessors | Complete | Constraint |
| --- | --- | --- | --- | --- | --- | --- | --- | --- |
| 1 |  | Implement Cross-Platform Network Layer |  | 2007-01-10 | 2007-01-12 |  | 100% |  |
| 2 | 2 | **Zaurus Synchronization API** |  | 2007-01-15 | 2007-02-21 | 1 |  |  |
| 3 |  | Initialize Library |  | 2007-01-15 | 2007-01-15 |  | 100% |  |
| 4 | 2.2 | **Initiate Sync** |  | 2007-01-15 | 2007-01-15 |  | 100% |  |
| 5 |  | Connect to Zaurus |  | 2007-01-15 | 2007-01-15 |  | 100% |  |
| 6 |  | Handle Connection |  | 2007-01-15 | 2007-01-15 |  | 100% |  |
| 7 |  | Move Connect Into Initiate |  | 2007-01-15 | 2007-01-15 |  |  |  |
| 8 | 2.3 | **Obtain Device Information** |  | 2007-01-16 | 2007-01-17 | 4 |  |  |
| 9 |  | RIG Message |  | 2007-01-16 | 2007-01-16 |  | 100% |  |
| 10 |  | AIG Message |  | 2007-01-16 | 2007-01-16 |  | 100% |  |
| 11 |  | Stored Device Info Updating |  | 2007-01-17 | 2007-01-17 | 9, 10 | 100% |  |
| 12 |  | Check If Requires Authentication |  | 2007-01-18 | 2007-01-18 | 8 |  |  |
| 13 | 2.5 | **Authenticate Password** |  | 2007-01-19 | 2007-01-22 | 12 |  |  |
| 14 |  | AEX Message |  | 2007-01-19 | 2007-01-19 |  | 100% |  |
| 15 |  | RRL Message |  | 2007-01-19 | 2007-01-19 |  | 100% |  |
| 16 |  | ANG Message |  | 2007-01-19 | 2007-01-19 |  | 100% |  |
| 17 |  | Auth Passwd Using Messages |  | 2007-01-22 | 2007-01-22 | 14, 15, 16 |  |  |
| 18 |  | Check If Requires Full Sync |  | 2007-01-18 | 2007-01-18 | 8 |  |  |
| 19 | 2.7 | **Obtain Zaurus Sync State** |  | 2007-01-23 | 2007-01-24 | 13 |  |  |
| 20 |  | RMG Message |  | 2007-01-23 | 2007-01-23 |  | 100% |  |
| 21 |  | AMG Message |  | 2007-01-23 | 2007-01-23 |  | 100% |  |
| 22 |  | Obtain Sync State Using Messages |  | 2007-01-24 | 2007-01-24 | 20, 21 |  |  |
| 23 | 2.8 | **Obtain Last Time Synced** |  | 2007-01-25 | 2007-01-26 | 19 |  |  |
| 24 |  | RTG Message |  | 2007-01-25 | 2007-01-25 |  | 100% |  |
| 25 |  | ATG Message |  | 2007-01-25 | 2007-01-25 |  | 100% |  |
| 26 |  | Get Last Time Sync Using Messages |  | 2007-01-26 | 2007-01-26 | 25, 24 |  |  |
| 27 | 2.9 | **Set Current Sync Time** |  | 2007-01-29 | 2007-01-30 | 23 |  |  |
| 28 |  | RTS Message |  | 2007-01-29 | 2007-01-29 |  | 100% |  |
| 29 |  | Set Cur Sync Time Using Messages |  | 2007-01-30 | 2007-01-30 | 28 |  |  |
| 30 | 2.10 | **Reset Sync Log** |  | 2007-02-15 | 2007-02-19 |  |  |  |
| 31 |  | RMS Message |  | 2007-02-15 | 2007-02-15 |  |  | start no earlier than 2007-02-15 |
| 32 |  | RMS (Empty) Message |  | 2007-02-16 | 2007-02-16 | 31 |  | start no earlier than 2007-02-15 |
| 33 |  | Reset Sync Log Using Messages |  | 2007-02-19 | 2007-02-19 | 31, 32 |  |  |
| 34 | 2.11 | **Reset Item States to New** |  | 2007-02-20 | 2007-02-21 | 30 |  |  |
| 35 |  | RSS Message |  | 2007-02-20 | 2007-02-20 |  |  |  |
| 36 |  | Reset Item States Using RSS Message |  | 2007-02-21 | 2007-02-21 | 35 |  |  |
| 37 | 2.12 | **Obtain Sync Param Format** |  | 2007-01-15 | 2007-01-16 |  |  |  |
| 38 |  | RDI Message |  | 2007-01-15 | 2007-01-15 |  |  |  |
| 39 |  | ADI Message |  | 2007-01-15 | 2007-01-15 |  |  |  |
| 40 |  | Get Sync Param Format Using Messages |  | 2007-01-16 | 2007-01-16 | 39, 38 |  |  |
| 41 | 2.13 | **Obtain Sync ID List** |  | 2007-01-31 | 2007-02-01 | 27 |  |  |
| 42 |  | RSY Message |  | 2007-01-31 | 2007-01-31 |  | 100% |  |
| 43 |  | ASY Message |  | 2007-01-31 | 2007-01-31 |  | 100% |  |
| 44 |  | Get Sync ID List Using Messages |  | 2007-02-01 | 2007-02-01 | 43, 42 |  |  |
| 45 | 2.14 | **Obtain Item Data** |  | 2007-02-02 | 2007-02-05 | 41 |  |  |
| 46 |  | RDR Message |  | 2007-02-02 | 2007-02-02 |  | 100% |  |
| 47 |  | ADR Message |  | 2007-02-02 | 2007-02-02 |  |  |  |
| 48 |  | Get Item Data Using Messages |  | 2007-02-05 | 2007-02-05 | 47, 46 |  |  |
| 49 |  | Add Todo Items |  | 2007-02-06 | 2007-02-08 | 45, 41 |  |  |
| 50 |  | Add Calendar Items |  | 2007-02-06 | 2007-02-08 | 45, 41 |  |  |
| 51 |  | Add Address Items |  | 2007-02-06 | 2007-02-08 | 45, 41 |  |  |
| 52 |  | Mod Todo Items |  | 2007-02-06 | 2007-02-08 | 45, 41 |  |  |
| 53 |  | Mod Calendar Items |  | 2007-02-06 | 2007-02-08 | 45, 41 |  |  |
| 54 |  | Mod Address Items |  | 2007-02-06 | 2007-02-08 | 45, 41 |  |  |
| 55 |  | Del Todo Items |  | 2007-02-06 | 2007-02-08 | 45, 41 |  |  |
| 56 |  | Del Calendar Items |  | 2007-02-06 | 2007-02-08 | 45, 41 |  |  |
| 57 |  | Del Address Items |  | 2007-02-06 | 2007-02-08 | 45, 41 |  |  |
| 58 | 2.24 | **Terminate Sync** |  | 2007-02-06 | 2007-02-07 | 45 | 100% |  |
| 59 |  | RDS Message |  | 2007-02-06 | 2007-02-06 |  | 100% |  |
| 60 |  | Terminate Sync Using Messages |  | 2007-02-07 | 2007-02-07 | 59 |  |  |
| 61 |  | Disconnect from Zaurus |  | 2007-02-06 | 2007-02-06 |  | 100% |  |
| 62 |  | Move Disconnect to Terminate |  | 2007-02-06 | 2007-02-06 |  |  |  |
| 63 |  | Finialize Library |  | 2007-02-07 | 2007-02-07 | 61 | 100% |  |
| 64 |  | Code Freeze | 0d | 2007-04-24 | 2007-04-24 |  |  | must start on 2007-04-24 |
| 65 |  | Spring 2007 Semester Ends | 0d | 2007-05-04 | 2007-05-04 |  |  | must start on 2007-05-04 |

## Version 2 (saved 2007-02-21)

Note of the change: * Created the zdtm_proto.h and zdtm_proto.c files and added them to the project.

Last finish stays 2007-05-04. Complete tasks 21 → 23.

Changed:

| ID | Task | Complete |
| --- | --- | --- |
| 7 | Move Connect Into Initiate | 0% → 100% |
| 12 | Check If Requires Authentication | 0% → 100% |

## Version 3 (saved 2007-02-22)

Note of the change: * Added the retrieved_sync_state, todo_slow_sync_required, calendar_slow_sync_required, and address_book_slow_sync_required flags to the zdtm_environment structure so that I may use them to store and track the sync stata. I also added code to zdtm_initialize() in zdtm_sync.c to appropriately initialize them to logical values.

Last finish stays 2007-05-04. Complete tasks 23 → 25.

Changed:

| ID | Task | Complete |
| --- | --- | --- |
| 18 | Check If Requires Full Sync | 0% → 100% |
| 22 | Obtain Sync State Using Messages | 0% → 100% |

## Version 4 (saved 2007-03-06)

Note of the change: * Modified the order of tasks so that the gantt chart is easier to read.

Last finish stays 2007-05-04. Complete tasks 25 → 31.

Changed:

| ID | Task | Start | Finish | Complete | Predecessors | Other |
| --- | --- | --- | --- | --- | --- | --- |
| 17 | Auth Passwd Using Messages |  |  | 0% → 100% |  |  |
| 26 | Get Last Time Sync Using Messages |  |  | 0% → 100% |  |  |
| 29 | Set Cur Sync Time Using Messages |  |  | 0% → 100% |  |  |
| 40 | Get Sync ID List Using Messages |  |  | 0% → 100% |  | resources none → Andrew De Ponte |
| 41 | **Obtain Sync Param Format** | 2007-01-15 → 2007-02-02 (+18d) | 2007-01-16 → 2007-02-05 (+20d) |  | none → 37 |  |
| 42 | RDI Message | 2007-01-15 → 2007-02-02 (+18d) | 2007-01-15 → 2007-02-02 (+18d) |  |  |  |
| 43 | ADI Message | 2007-01-15 → 2007-02-02 (+18d) | 2007-01-15 → 2007-02-02 (+18d) |  |  |  |
| 44 | Get Sync Param Format Using Messages | 2007-01-16 → 2007-02-05 (+20d) | 2007-01-16 → 2007-02-05 (+20d) |  |  |  |
| 45 | **Obtain Item Data** | 2007-02-02 → 2007-02-06 (+4d) | 2007-02-05 → 2007-02-07 (+2d) |  | 37 → 41, 37 |  |
| 46 | RDR Message | 2007-02-02 → 2007-02-06 (+4d) | 2007-02-02 → 2007-02-06 (+4d) |  |  |  |
| 47 | ADR Message | 2007-02-02 → 2007-02-06 (+4d) | 2007-02-02 → 2007-02-06 (+4d) |  |  |  |
| 48 | Get Item Data Using Messages | 2007-02-05 → 2007-02-07 (+2d) | 2007-02-05 → 2007-02-07 (+2d) |  |  |  |
| 49 | Add Todo Items | 2007-02-06 → 2007-02-08 (+2d) | 2007-02-08 → 2007-02-12 (+4d) |  |  |  |
| 50 | Add Calendar Items | 2007-02-06 → 2007-02-08 (+2d) | 2007-02-08 → 2007-02-12 (+4d) |  |  |  |
| 51 | Add Address Items | 2007-02-06 → 2007-02-08 (+2d) | 2007-02-08 → 2007-02-12 (+4d) |  |  |  |
| 52 | Mod Todo Items | 2007-02-06 → 2007-02-08 (+2d) | 2007-02-08 → 2007-02-12 (+4d) |  |  |  |
| 53 | Mod Calendar Items | 2007-02-06 → 2007-02-08 (+2d) | 2007-02-08 → 2007-02-12 (+4d) |  |  |  |
| 54 | Mod Address Items | 2007-02-06 → 2007-02-08 (+2d) | 2007-02-08 → 2007-02-12 (+4d) |  |  |  |
| 55 | Del Todo Items | 2007-02-06 → 2007-02-08 (+2d) | 2007-02-08 → 2007-02-12 (+4d) |  |  |  |
| 56 | Del Calendar Items | 2007-02-06 → 2007-02-08 (+2d) | 2007-02-08 → 2007-02-12 (+4d) |  |  |  |
| 57 | Del Address Items | 2007-02-06 → 2007-02-08 (+2d) | 2007-02-08 → 2007-02-12 (+4d) |  |  |  |
| 58 | **Terminate Sync** | 2007-02-06 → 2007-02-08 (+2d) | 2007-02-07 → 2007-02-09 (+2d) |  |  |  |
| 59 | RDS Message | 2007-02-06 → 2007-02-08 (+2d) | 2007-02-06 → 2007-02-08 (+2d) |  |  |  |
| 60 | Terminate Sync Using Messages | 2007-02-07 → 2007-02-09 (+2d) | 2007-02-07 → 2007-02-09 (+2d) | 0% → 100% |  | resources none → Andrew De Ponte |
| 61 | Disconnect from Zaurus | 2007-02-06 → 2007-02-08 (+2d) | 2007-02-06 → 2007-02-08 (+2d) |  |  |  |
| 62 | Move Disconnect to Terminate | 2007-02-06 → 2007-02-08 (+2d) | 2007-02-06 → 2007-02-08 (+2d) | 0% → 100% |  |  |
| 63 | Finialize Library | 2007-02-07 → 2007-02-09 (+2d) | 2007-02-07 → 2007-02-09 (+2d) |  |  |  |

## Version 5 (saved 2007-03-11)

Note of the change: * Implemented the RDI and ADI messages respectively in zdtm_rdi_msg.h, zdtm_rdi_msg.c, zdtm_adi_msg.h, and zdtm_adi_msg.c. To do so I needed to add the struct zdtm_adi_msg_param to the zdtm_types.h file so that I could create a list of params inside the library environment structure as well as have one in the ADI message payload structure.

Last finish stays 2007-05-04. Complete tasks 31 → 34.

Added:

| ID | Task | Start | Finish | Predecessors | Constraint | Resources |
| --- | --- | --- | --- | --- | --- | --- |
| 44 | **Obtain Item Functionality** | 2007-03-15 | 2007-03-27 | 40 |  |  |
| 47 | **Parse Item Data Into Approp Struct** | 2007-03-19 | 2007-03-21 | 46, 45 |  |  |
| 52 | Get Todo Item | 2007-03-22 | 2007-03-27 |  |  | Andrew De Ponte [33%] |
| 53 | Get Calendar Item | 2007-03-22 | 2007-03-27 |  |  | Andrew De Ponte [33%] |
| 54 | Get Address Book Item | 2007-03-22 | 2007-03-27 |  |  | Andrew De Ponte [33%] |
| 65 | **Add/Mod Item Functionality** | 2007-03-19 | 2007-04-03 | 62, 40 |  |  |
| 66 | RDW Message | 2007-03-19 | 2007-03-20 |  | start no earlier than 2007-03-11 | Robert Wohleb [50%] |
| 67 | ADW Message | 2007-03-19 | 2007-03-20 |  | start no earlier than 2007-03-11 | Robert Wohleb [50%] |
| 68 | **Build Item Data from Approp Struct** | 2007-03-21 | 2007-03-23 | 66, 67 |  |  |
| 69 | Build Todo Item Data | 2007-03-21 | 2007-03-21 |  |  | Robert Wohleb |
| 70 | Build Calendar Item Data | 2007-03-22 | 2007-03-22 | 69 |  | Robert Wohleb |
| 71 | Build Address Book Item Data | 2007-03-23 | 2007-03-23 | 70 |  | Robert Wohleb |
| 72 | **Add Item Functionality** | 2007-03-26 | 2007-04-03 | 68 |  |  |
| 73 | Add Todo Item | 2007-03-26 | 2007-04-03 |  |  | Robert Wohleb [16%] |
| 74 | Add Calendar Item | 2007-03-26 | 2007-04-03 |  |  | Robert Wohleb [16%] |
| 75 | Add Address Item | 2007-03-26 | 2007-04-03 |  |  | Robert Wohleb [16%] |
| 76 | **Modify Item Functionality** | 2007-03-26 | 2007-04-03 | 68 |  |  |

Removed: 45 Obtain Item Data

Changed:

| ID | Task | Start | Finish | Complete | Predecessors | Other |
| --- | --- | --- | --- | --- | --- | --- |
| 1 | Implement Cross-Platform Network Layer |  | 2007-01-12 → 2007-01-19 (+7d) |  |  |  |
| 2 | **Zaurus Synchronization API** | 2007-01-15 → 2007-01-22 (+7d) | 2007-02-21 → 2007-04-03 (+41d) |  |  |  |
| 3 | Initialize Library | 2007-01-15 → 2007-01-22 (+7d) | 2007-01-15 → 2007-01-23 (+8d) |  |  |  |
| 4 | **Initiate Sync** | 2007-01-15 → 2007-01-24 (+9d) | 2007-01-15 → 2007-01-29 (+14d) |  | none → 3 | resources Andrew De Ponte → none |
| 5 | Connect to Zaurus | 2007-01-15 → 2007-01-24 (+9d) | 2007-01-15 → 2007-01-29 (+14d) |  |  | resources Andrew De Ponte → Andrew De Ponte [33%] |
| 6 | Handle Connection | 2007-01-15 → 2007-01-24 (+9d) | 2007-01-15 → 2007-01-29 (+14d) |  |  | resources Andrew De Ponte → Andrew De Ponte [33%] |
| 7 | Move Connect Into Initiate | 2007-01-15 → 2007-01-24 (+9d) | 2007-01-15 → 2007-01-29 (+14d) |  |  | resources Andrew De Ponte → Andrew De Ponte [33%] |
| 8 | **Obtain Device Information** | 2007-01-16 → 2007-01-29 (+13d) | 2007-01-17 → 2007-02-01 (+15d) |  |  |  |
| 9 | RIG Message | 2007-01-16 → 2007-01-29 (+13d) | 2007-01-16 → 2007-01-31 (+15d) |  |  | resources Andrew De Ponte → Andrew De Ponte [50%] |
| 10 | AIG Message | 2007-01-16 → 2007-01-29 (+13d) | 2007-01-16 → 2007-01-31 (+15d) |  |  | resources Andrew De Ponte → Andrew De Ponte [50%] |
| 11 | Stored Device Info Updating | 2007-01-17 → 2007-01-31 (+14d) | 2007-01-17 → 2007-02-01 (+15d) |  |  |  |
| 12 | Check If Requires Authentication | 2007-01-18 → 2007-02-01 (+14d) | 2007-01-18 → 2007-02-05 (+18d) |  |  | resources Andrew De Ponte → Andrew De Ponte [50%] |
| 13 | **Authenticate Password** | 2007-01-19 → 2007-02-05 (+17d) | 2007-01-22 → 2007-02-09 (+18d) |  |  |  |
| 14 | AEX Message | 2007-01-19 → 2007-02-05 (+17d) | 2007-01-19 → 2007-02-08 (+20d) |  |  | resources Andrew De Ponte → Andrew De Ponte [33%] |
| 15 | RRL Message | 2007-01-19 → 2007-02-05 (+17d) | 2007-01-19 → 2007-02-08 (+20d) |  |  | resources Andrew De Ponte → Andrew De Ponte [33%] |
| 16 | ANG Message | 2007-01-19 → 2007-02-05 (+17d) | 2007-01-19 → 2007-02-08 (+20d) |  |  | resources Andrew De Ponte → Andrew De Ponte [33%] |
| 17 | Auth Passwd Using Messages | 2007-01-22 → 2007-02-08 (+17d) | 2007-01-22 → 2007-02-09 (+18d) |  |  |  |
| 18 | Check If Requires Full Sync | 2007-01-18 → 2007-02-01 (+14d) | 2007-01-18 → 2007-02-05 (+18d) |  |  | resources Andrew De Ponte → Andrew De Ponte [50%] |
| 19 | **Obtain Zaurus Sync State** | 2007-01-23 → 2007-02-09 (+17d) | 2007-01-24 → 2007-02-14 (+21d) |  |  |  |
| 20 | RMG Message | 2007-01-23 → 2007-02-09 (+17d) | 2007-01-23 → 2007-02-13 (+21d) |  |  | resources Andrew De Ponte → Andrew De Ponte [50%] |
| 21 | AMG Message | 2007-01-23 → 2007-02-09 (+17d) | 2007-01-23 → 2007-02-13 (+21d) |  |  | resources Andrew De Ponte → Andrew De Ponte [50%] |
| 22 | Obtain Sync State Using Messages | 2007-01-24 → 2007-02-13 (+20d) | 2007-01-24 → 2007-02-14 (+21d) |  |  |  |
| 23 | **Obtain Last Time Synced** | 2007-01-25 → 2007-02-14 (+20d) | 2007-01-26 → 2007-02-21 (+26d) |  |  |  |
| 24 | RTG Message | 2007-01-25 → 2007-02-14 (+20d) | 2007-01-25 → 2007-02-20 (+26d) |  |  | resources Andrew De Ponte → Andrew De Ponte [50%] |
| 25 | ATG Message | 2007-01-25 → 2007-02-14 (+20d) | 2007-01-25 → 2007-02-20 (+26d) |  |  | resources Andrew De Ponte → Andrew De Ponte [50%] |
| 26 | Get Last Time Sync Using Messages | 2007-01-26 → 2007-02-20 (+25d) | 2007-01-26 → 2007-02-21 (+26d) |  |  |  |
| 27 | **Set Current Sync Time** | 2007-01-29 → 2007-02-21 (+23d) | 2007-01-30 → 2007-02-23 (+24d) |  |  |  |
| 28 | RTS Message | 2007-01-29 → 2007-02-21 (+23d) | 2007-01-29 → 2007-02-22 (+24d) |  |  |  |
| 29 | Set Cur Sync Time Using Messages | 2007-01-30 → 2007-02-22 (+23d) | 2007-01-30 → 2007-02-23 (+24d) |  |  |  |
| 30 | **Obtain Sync ID List** | 2007-01-31 → 2007-02-23 (+23d) | 2007-02-01 → 2007-03-02 (+29d) |  |  |  |
| 31 | RSY Message | 2007-01-31 → 2007-02-23 (+23d) | 2007-01-31 → 2007-03-01 (+29d) |  |  | resources Andrew De Ponte → Andrew De Ponte [50%] |
| 32 | ASY Message | 2007-01-31 → 2007-02-23 (+23d) | 2007-01-31 → 2007-03-01 (+29d) |  |  | resources Andrew De Ponte → Andrew De Ponte [50%] |
| 33 | Get Sync ID List Using Messages | 2007-02-01 → 2007-03-01 (+28d) | 2007-02-01 → 2007-03-02 (+29d) |  |  |  |
| 34 | **Terminate Sync** | 2007-02-08 → 2007-03-02 (+22d) | 2007-02-09 → 2007-03-09 (+28d) |  | Obtain Item Data → 30 | resources Andrew De Ponte → none |
| 35 | RDS Message | 2007-02-08 → 2007-03-02 (+22d) | 2007-02-08 → 2007-03-07 (+27d) |  |  | resources Andrew De Ponte → Andrew De Ponte [33%] |
| 36 | Terminate Sync Using Messages | 2007-02-09 → 2007-03-07 (+26d) | 2007-02-09 → 2007-03-09 (+28d) |  |  | resources Andrew De Ponte → Andrew De Ponte [50%] |
| 37 | Disconnect from Zaurus | 2007-02-08 → 2007-03-02 (+22d) | 2007-02-08 → 2007-03-07 (+27d) |  |  | resources Andrew De Ponte → Andrew De Ponte [33%] |
| 38 | Move Disconnect to Terminate | 2007-02-08 → 2007-03-02 (+22d) | 2007-02-08 → 2007-03-07 (+27d) |  |  | resources Andrew De Ponte → Andrew De Ponte [33%] |
| 39 | Finialize Library | 2007-02-09 → 2007-03-07 (+26d) | 2007-02-09 → 2007-03-09 (+28d) |  |  | resources Andrew De Ponte → Andrew De Ponte [50%] |
| 40 | **Obtain Sync Param Format** | 2007-02-02 → 2007-03-12 (+38d) | 2007-02-05 → 2007-03-14 (+37d) |  | 30 → 34 |  |
| 41 | RDI Message | 2007-02-02 → 2007-03-12 (+38d) | 2007-02-02 → 2007-03-13 (+39d) | 0% → 100% |  | constraint none → start no earlier than 2007-03-11; resources none → Andrew De Ponte [50%] |
| 42 | ADI Message | 2007-02-02 → 2007-03-12 (+38d) | 2007-02-02 → 2007-03-13 (+39d) | 0% → 100% |  | constraint none → start no earlier than 2007-03-11; resources none → Andrew De Ponte [50%] |
| 43 | Get Sync Param Format Using Messages | 2007-02-05 → 2007-03-14 (+37d) | 2007-02-05 → 2007-03-14 (+37d) | 0% → 100% |  | resources none → Andrew De Ponte |
| 45 | RDR Message | 2007-02-06 → 2007-03-15 (+37d) | 2007-02-06 → 2007-03-16 (+38d) |  |  | constraint none → start no earlier than 2007-03-11; resources Andrew De Ponte → Andrew De Ponte [50%] |
| 46 | ADR Message | 2007-02-06 → 2007-03-15 (+37d) | 2007-02-06 → 2007-03-16 (+38d) |  |  | constraint none → start no earlier than 2007-03-11; resources none → Andrew De Ponte [50%] |
| 48 | Parse Todo Item Data | 2007-02-07 → 2007-03-19 (+40d) | 2007-02-07 → 2007-03-19 (+40d) |  | 46, 45 → none | was named Get Item Data Using Messages; resources none → Andrew De Ponte |
| 49 | Parse Calendar Item Data | 2007-02-08 → 2007-03-20 (+40d) | 2007-02-12 → 2007-03-20 (+36d) |  | Obtain Item Data, 30 → 48 | was named Add Todo Items; resources none → Andrew De Ponte |
| 50 | Parse Address Book Item Data | 2007-02-08 → 2007-03-21 (+41d) | 2007-02-12 → 2007-03-21 (+37d) |  | Obtain Item Data, 30 → 49 | was named Add Calendar Items; resources none → Andrew De Ponte |
| 51 | **Get Item Functionality** | 2007-02-08 → 2007-03-22 (+42d) | 2007-02-12 → 2007-03-27 (+43d) |  | Obtain Item Data, 30 → 47 | was named Add Address Items |
| 55 | **Delete Item Functionality** | 2007-02-08 → 2007-03-27 (+47d) | 2007-02-12 → 2007-03-29 (+45d) |  | Obtain Item Data, 30 → 44 | was named Del Todo Items |
| 56 | RDD Message | 2007-02-08 → 2007-03-27 (+47d) | 2007-02-12 → 2007-03-29 (+45d) |  | Obtain Item Data, 30 → none | was named Del Calendar Items; constraint none → start no earlier than 2007-03-11; resources none → Andrew De Ponte [50%] |
| 57 | Delete Item using Messages | 2007-02-08 → 2007-03-27 (+47d) | 2007-02-12 → 2007-03-29 (+45d) |  | Obtain Item Data, 30 → none | was named Del Address Items; constraint none → start no earlier than 2007-03-11; resources none → Andrew De Ponte [50%] |
| 58 | **Reset Sync Log** | 2007-02-15 → 2007-03-12 (+25d) | 2007-02-19 → 2007-03-14 (+23d) |  |  |  |
| 59 | RMS Message | 2007-02-15 → 2007-03-12 (+25d) | 2007-02-15 → 2007-03-12 (+25d) | 0% → 50% |  | constraint start no earlier than 2007-02-15 → start no earlier than 2007-03-11; resources Robert Wohleb → John McCullough [50%]; Robert Wohleb [50%] |
| 60 | RMS (Empty) Message | 2007-02-16 → 2007-03-13 (+25d) | 2007-02-16 → 2007-03-13 (+25d) | 0% → 50% |  | resources Robert Wohleb → John McCullough [50%]; Robert Wohleb [50%] |
| 61 | Reset Sync Log Using Messages | 2007-02-19 → 2007-03-14 (+23d) | 2007-02-19 → 2007-03-14 (+23d) |  |  |  |
| 62 | **Reset Item States to New** | 2007-02-20 → 2007-03-15 (+23d) | 2007-02-21 → 2007-03-16 (+23d) |  |  |  |
| 63 | RSS Message | 2007-02-20 → 2007-03-15 (+23d) | 2007-02-20 → 2007-03-15 (+23d) | 0% → 50% |  |  |
| 64 | Reset Item States Using RSS Message | 2007-02-21 → 2007-03-16 (+23d) | 2007-02-21 → 2007-03-16 (+23d) |  |  |  |
| 77 | Mod Todo Items | 2007-02-08 → 2007-03-26 (+46d) | 2007-02-12 → 2007-04-03 (+50d) |  | Obtain Item Data, 30 → none | resources none → Robert Wohleb [16%] |
| 78 | Mod Calendar Items | 2007-02-08 → 2007-03-26 (+46d) | 2007-02-12 → 2007-04-02 (+49d) |  | Obtain Item Data, 30 → none | resources none → Robert Wohleb [18%] |
| 79 | Mod Address Items | 2007-02-08 → 2007-03-26 (+46d) | 2007-02-12 → 2007-04-02 (+49d) |  | Obtain Item Data, 30 → none | resources none → Robert Wohleb [18%] |

## Version 6 (saved 2007-03-12)

Note of the change: * Updated the lib_zdtm_sync_detailed_plan .planner and .html files respectively to represent the changes.

Last finish stays 2007-05-04. Complete tasks 34 → 37.

Changed:

| ID | Task | Complete |
| --- | --- | --- |
| 59 | RMS Message | 50% → 100% |
| 60 | RMS (Empty) Message | 50% → 100% |
| 61 | Reset Sync Log Using Messages | 0% → 100% |

## Version 7 (saved 2007-03-16)

Note of the change: * Created the zdtm_adr_msg.h and zdtm_adr_msg.c files and wrote the ADR message handling code so that ADR messages can now be properly parsed and handled.

Last finish stays 2007-05-04. Complete tasks 37 → 40.

Changed:

| ID | Task | Complete |
| --- | --- | --- |
| 46 | ADR Message | 0% → 100% |
| 48 | Parse Todo Item Data | 0% → 100% |
| 52 | Get Todo Item | 0% → 100% |

## Version 8 (saved 2007-03-29)

Note of the change: * Modified the lib_zdtm_sync_detailed_plan.planner file to reflect Rob's work today.

Last finish stays 2007-05-04. Complete tasks 40 → 42.

Changed:

| ID | Task | Complete | Other |
| --- | --- | --- | --- |
| 59 | RMS Message |  | resources John McCullough [50%]; Robert Wohleb [50%] → Robert Wohleb [50%]; John McCullough [50%] |
| 60 | RMS (Empty) Message |  | resources John McCullough [50%]; Robert Wohleb [50%] → Robert Wohleb [50%]; John McCullough [50%] |
| 63 | RSS Message | 50% → 100% |  |
| 64 | Reset Item States Using RSS Message | 0% → 100% |  |

## Version 9 (saved 2007-04-05)

Note of the change: * Implemented the zdtm_address_item structure in zdtm_common.h to represent an address book item.

Last finish stays 2007-05-04. Complete tasks 42 → 48.

Changed:

| ID | Task | Complete |
| --- | --- | --- |
| 49 | Parse Calendar Item Data | 0% → 100% |
| 50 | Parse Address Book Item Data | 0% → 100% |
| 53 | Get Calendar Item | 0% → 100% |
| 54 | Get Address Book Item | 0% → 100% |
| 56 | RDD Message | 0% → 100% |
| 57 | Delete Item using Messages | 0% → 100% |

## Version 10 (saved 2007-07-30)

Note of the change: * Created the zdtm_adw_msg.h and zdtm_adw_msg.c source files and implemented a structure to represent ADW messages as well as a function to parse raw ADW message content into a ADW message content structure. Beyond that, I defined the ADW_MSG_TYPE constant so that it can be used for message type identification and comparison.

Last finish stays 2007-05-04. Complete tasks 48 → 49.

Changed:

| ID | Task | Finish | Complete | Other |
| --- | --- | --- | --- | --- |
| 59 | RMS Message |  |  | resources Robert Wohleb [50%]; John McCullough [50%] → John McCullough [50%]; Robert Wohleb [50%] |
| 60 | RMS (Empty) Message |  |  | resources Robert Wohleb [50%]; John McCullough [50%] → John McCullough [50%]; Robert Wohleb [50%] |
| 67 | ADW Message | 2007-03-20 → 2007-03-19 (-1d) | 0% → 100% | resources Robert Wohleb [50%] → Andrew De Ponte |
